# 甘特图

How a schedule from MS Project changed from version to version. A marks actual dates.

## Version 1 (saved 2018-11-25, file 甘特图计划 .mpp)

| ID | WBS | Task | Duration | Start | Finish | Predecessors | Complete | Total float | Constraint |
| --- | --- | --- | --- | --- | --- | --- | --- | --- | --- |
| 1 | 1 | **软件工程系列课程教学辅助网站计划** | 13.81d | 2018-09-20 08:00 A | 2019-01-18 20:00 |  | 41% |  |  |
| 2 | 1.1 | **项目启动** | 2d | 2018-09-26 08:00 | 2018-09-30 20:00 |  | 100% |  |  |
| 3 |  | 第一次小组会议 | 1h | 2018-09-27 08:00 A | 2018-09-27 09:00 A |  | 100% |  |  |
| 4 |  | 项目章程编写 | 3h | 2018-09-27 19:30 A | 2018-09-29 20:45 A | 3 | 100% |  |  |
| 5 |  | 环境搭建 | 3h | 2018-09-27 09:00 A | 2018-09-27 12:00 A | 3 | 100% |  |  |
| 6 | 1.2 | **项目计划** | 2.94d | 2018-09-27 08:00 A | 2018-10-15 20:45 |  | 96% |  |  |
| 7 |  | 可行性分析 | 3h | 2018-09-28 08:00 A | 2018-09-28 11:00 A | 3 | 100% |  |  |
| 8 |  | 甘特图初稿 | 3h | 2018-09-27 08:00 A | 2018-09-27 11:00 A | 3 | 100% |  |  |
| 9 |  | 第一次ppt模板查找编写 | 4h | 2018-09-27 08:00 A | 2018-09-27 12:00 A | 3 | 100% |  |  |
| 10 |  | 计划ppt修改 | 3h | 2018-09-27 09:00 A | 2018-09-27 12:00 A | 9 | 100% |  |  |
| 11 |  | 创建wbs | 2h | 2018-09-30 19:30 | 2018-10-08 20:45 | 4 |  |  |  |
| 12 |  | 人力资源与预算 | 4h | 2018-09-27 09:00 A | 2018-09-27 14:00 A | 3 | 100% |  |  |
| 13 |  | 创建OBS | 1h | 2018-09-30 19:30 | 2018-09-30 20:45 | 3, 4 |  |  |  |
| 14 |  | github创建 提交文档 | 5h | 2018-09-28 08:00 A | 2018-09-28 14:00 A | 3 | 100% |  |  |
| 15 |  | 需求工程项目计划书编写 | 4h | 2018-09-28 08:00 A | 2018-09-28 12:00 A | 3, 11, 12, 13 | 100% |  |  |
| 16 |  | 项目计划书模板查找 修改 | 4h | 2018-09-28 08:00 A | 2018-09-28 14:00 A | 3 | 100% |  |  |
| 17 |  | 项目计划书编写 | 4h | 2018-09-28 08:00 A | 2018-09-28 12:00 A | 16, 12, 11, 13 | 100% |  |  |
| 18 |  | 制定项目管理计划 | 3h | 2018-09-27 19:30 A | 2018-09-29 20:45 A | 3, 4 | 100% |  |  |
| 19 |  | 第二次小组会议 | 1h | 2018-09-29 08:00 A | 2018-09-29 09:00 A | 3 | 100% |  | start no earlier than 2018-09-29 08:00 |
| 20 |  | 国庆放假 | 5d | 2018-10-01 08:00 A | 2018-10-07 20:00 A |  | 100% |  | finish no earlier than 2018-10-07 20:00 |
| 21 | 1.3 | **UML知识搭建** | 6.38d | 2018-10-03 08:00 A | 2018-11-28 12:00 | 2 | 94% | 6.06d |  |
| 22 |  | 修订《项目可行性分析报告》 | 3h | 2018-10-03 08:00 A | 2018-10-03 11:00 A | 7 | 100% |  |  |
| 23 |  | UML绪论 | 3h | 2018-10-03 08:00 A | 2018-10-03 11:00 A | 3 | 100% |  |  |
| 24 |  | 第三次小组会议 | 1h | 2018-10-13 08:00 A | 2018-10-13 09:00 A | 19 | 100% |  |  |
| 25 |  | 第一次team building | 2h | 2018-10-13 08:00 A | 2018-10-13 10:00 A | 24 | 100% |  |  |
| 26 |  | 《需求工程计划-初步》提交 | 4h | 2018-10-10 08:00 A | 2018-10-10 12:00 A | 7 | 100% |  |  |
| 27 |  | 《项目总体计划》编写 | 3h | 2018-10-10 08:00 A | 2018-10-10 11:00 A | 7, 8 | 100% |  |  |
| 28 |  | 需求工程计划书修改 | 4h | 2018-10-13 08:00 A | 2018-10-13 12:00 A | 15 | 100% |  |  |
| 29 |  | github分支修改 | 5h | 2018-10-13 08:00 A | 2018-10-13 14:00 A | 14 | 100% |  |  |
| 30 |  | UML概述 翻转 | 5h | 2018-10-10 08:00 A | 2018-10-10 14:00 A | 23 | 100% |  |  |
| 31 |  | 概述ppt修订 | 3h | 2018-10-12 08:00 A | 2018-10-12 11:00 A | 30 | 100% |  |  |
| 32 |  | 甘特图修改 | 3h | 2018-10-10 08:00 A | 2018-10-10 11:00 A | 8 | 100% |  |  |
| 33 |  | 第四次小组会议 | 1h | 2018-10-20 08:00 A | 2018-10-20 09:00 A | 24 | 100% |  |  |
| 34 |  | 《QA计划》提交 | 5h | 2018-10-17 08:00 A | 2018-10-17 14:00 A | 33 | 100% |  |  |
| 35 |  | UML工具process on 翻转ppt | 5h | 2018-10-17 08:00 A | 2018-10-17 13:00 A | 30 | 100% |  |  |
| 36 |  | process on 组内使用教学 | 3h | 2018-10-11 08:00 A | 2018-10-11 11:00 A | 30 | 100% |  |  |
| 37 |  | 项目章程修改 | 3h | 2018-10-21 08:00 A | 2018-10-21 11:00 A | 4 | 100% |  |  |
| 38 |  | 第五次小组会议 | 1h | 2018-10-27 08:00 A | 2018-10-27 09:00 A | 33 | 100% |  |  |
| 39 |  | 需求工程项目计划书修改 | 4h | 2018-10-27 08:00 A | 2018-10-27 12:00 A | 28 | 100% |  |  |
| 40 |  | 软件质量保证计划编写 | 3h | 2018-10-27 08:00 A | 2018-10-27 11:00 A | 38 | 100% |  |  |
| 41 |  | UML 六种图翻转 用例图 类图 | 4h | 2018-10-29 08:00 A | 2018-10-29 12:00 A | 35 | 100% |  |  |
| 42 |  | UML 六种图翻转 状态图 顺序图 | 4h | 2018-10-18 08:00 A | 2018-10-18 12:00 A | 35 | 100% |  |  |
| 43 |  | UML 六种图翻转 部署图 协作图 | 4h | 2018-10-18 08:00 A | 2018-10-18 12:00 A | 35 | 100% |  |  |
| 44 |  | UML六图ppt修订 | 3h | 2018-10-19 08:00 A | 2018-10-19 11:00 A | 43 | 100% |  |  |
| 45 |  | 第六次小组会议 | 1h | 2018-11-03 08:00 A | 2018-11-03 09:00 A | 38 | 100% |  |  |
| 46 |  | 甘特图更新 | 4h | 2018-11-04 08:00 A | 2018-11-04 12:00 A | 45 | 100% |  |  |
| 47 |  | 项目章程修改 | 3h | 2018-11-04 08:00 A | 2018-11-04 11:00 A | 37 | 100% |  |  |
| 48 |  | 需求计划修改 | 5h | 2018-11-04 08:00 A | 2018-11-04 14:00 A | 39 | 100% |  |  |
| 49 |  | 项目计划书修改 | 4h | 2018-11-04 08:00 A | 2018-11-04 12:00 A | 16 | 100% |  |  |
| 50 |  | UML界面原型 翻转 | 4h | 2018-11-03 08:00 A | 2018-11-03 12:00 A | 41 | 100% |  |  |
| 51 |  | 界面原型ppt修订 | 4h | 2018-11-10 08:00 A | 2018-11-10 12:00 A | 50 | 100% |  |  |
| 52 |  | 组内界面原型软件教学 | 3h | 2018-11-11 08:00 A | 2018-11-11 11:00 A | 50 | 100% |  |  |
| 53 |  | 里程碑ppt编写 | 4h | 2018-11-03 09:00 A | 2018-11-03 14:00 A | 45 | 100% |  |  |
| 54 |  | 第七次小组会议 | 1h | 2018-11-10 08:00 A | 2018-11-10 09:00 A | 45 | 100% |  |  |
| 55 |  | 培训计划编写 | 4h | 2018-11-10 09:00 A | 2018-11-10 14:00 A | 54 | 100% |  |  |
| 56 |  | 培训计划修订审核 | 2h | 2018-11-11 08:00 A | 2018-11-11 10:00 A | 55 | 100% |  |  |
| 57 |  | obs结构修改 | 3h | 2018-11-10 09:00 A | 2018-11-10 12:00 A | 54 | 100% |  |  |
| 58 |  | wbs结构修改 | 3h | 2018-11-10 09:00 A | 2018-11-10 12:00 A | 54 | 100% |  |  |
| 59 |  | 甘特图修改对应 | 3h | 2018-11-10 09:00 A | 2018-11-10 12:00 A | 54 | 100% |  |  |
| 60 |  | 风险管理编写 | 4h | 2018-11-10 09:00 A | 2018-11-10 13:00 A | 54 | 100% |  |  |
| 61 |  | 风险管理修改 | 5h | 2018-11-11 08:00 A | 2018-11-11 14:00 A | 60 | 100% |  |  |
| 62 |  | 版本配置管理 | 4h | 2018-11-18 08:00 A | 2018-11-18 12:00 A | 54 | 100% |  |  |
| 63 |  | 需求计划书修改 | 3h | 2018-11-18 08:00 A | 2018-11-18 11:00 A | 49 | 100% |  |  |
| 64 |  | 需求计划里程碑ppt修改 | 4h | 2018-11-18 08:00 A | 2018-11-18 12:00 A | 53 | 100% |  |  |
| 65 |  | 培训计划修改 | 4h | 2018-11-18 08:00 A | 2018-11-18 12:00 A | 56 | 100% |  |  |
| 66 |  | 风险计划修改 | 3h | 2018-11-18 08:00 A | 2018-11-18 11:00 A | 61 | 100% |  |  |
| 67 |  | 第八次小组会议 | 1h | 2018-11-17 08:00 A | 2018-11-17 09:00 A | 54 | 100% |  |  |
| 68 |  | 模板查找与替换 | 3h | 2018-11-24 08:00 A | 2018-11-24 11:00 A | 67 | 100% |  |  |
| 69 |  | 与发起人谈话 | 1h | 2018-11-22 08:00 A | 2018-11-22 09:00 A | 67 | 100% |  |  |
| 70 |  | 新模板填写 | 5h | 2018-11-24 08:00 A | 2018-11-24 14:00 A | 69 | 100% |  |  |

| ID | WBS | Task | Duration | Start | Finish | Predecessors | Complete | Total float |
| --- | --- | --- | --- | --- | --- | --- | --- | --- |
| 71 |  | 甘特图修改 | 4h | 2018-11-25 08:00 A | 2018-11-25 12:00 A | 69 | 100% |  |
| 72 |  | wbs结构大修订 | 5h | 2018-11-25 08:00 A | 2018-11-26 20:45 | 69 | 60% | 6.19d |
| 73 |  | 里程碑ppt修订 | 3h | 2018-11-25 08:00 A | 2018-11-25 11:00 | 69 | 96% | 6.44d |
| 74 |  | 计划文档修改 | 5h | 2018-11-25 08:00 A | 2018-11-26 20:45 | 69 | 60% | 6.19d |
| 75 |  | 第九次小组会议 | 1h | 2018-11-24 08:00 A | 2018-11-24 09:00 A | 69 | 100% |  |
| 76 |  | 组内模拟评审 | 2h | 2018-11-26 08:00 | 2018-11-26 10:00 | 75 |  |  |
| 77 |  | 阶段评审1 | 2h | 2018-11-28 08:00 | 2018-11-28 10:00 | 54 |  |  |
| 78 |  | 检查项目 | 4h | 2018-11-28 08:00 | 2018-11-28 12:00 | 75 |  |  |
| 79 |  | 第十次小组会议 | 1h | 2018-11-24 09:00 A | 2018-11-24 10:00 A | 75 | 100% |  |
| 80 | 1.4 | **项目执行** | 6.06d | 2018-11-28 08:00 | 2019-01-18 20:00 | 6 |  | 0d |
| 81 | 1.4.1 | **需求开发** | 7.5d | 2018-11-28 08:00 | 2019-01-18 20:00 | 79 |  |  |
| 82 | 1.4.1.1 | **需求获取** | 3.69d | 2018-11-28 08:00 | 2018-12-08 17:00 | 79 |  |  |
| 83 |  | 从需求获取者获取需求 | 2h | 2018-11-29 08:00 | 2018-11-29 10:00 | 79 |  |  |
| 84 |  | 项目视图和范围编写 | 5h | 2018-11-29 08:00 | 2018-11-29 13:00 | 79 |  |  |
| 85 |  | 确定开发过程 | 4h | 2018-11-29 08:00 | 2018-11-29 12:00 | 79 |  |  |
| 86 |  | 用户分类 | 3h | 2018-11-29 08:00 | 2018-11-29 11:00 | 79 |  |  |
| 87 |  | 用户工作流程分析 | 3h | 2018-11-29 08:00 | 2018-11-29 11:00 | 79 |  |  |
| 88 |  | 确定质量属性 | 4h | 2018-11-29 08:00 | 2018-11-29 12:00 | 79 |  |  |
| 89 |  | 检查问题报告 | 4h | 2018-11-29 08:00 | 2018-11-29 12:00 | 79 |  |  |
| 90 |  | 界面原型草稿 | 5h | 2018-11-30 08:00 | 2018-11-30 13:00 | 79 |  |  |
| 91 |  | 第十一次小组会议 | 1h | 2018-12-01 08:00 | 2018-12-01 09:00 | 79 |  |  |
| 92 | 1.4.1.3 | **需求分析** | 3.69d | 2018-12-05 08:00 | 2018-12-15 17:00 | 91 |  |  |
| 93 |  | 关联图 | 5h | 2018-12-01 08:00 | 2018-12-01 13:00 | 91 |  |  |
| 94 |  | 开发原型 | 6h | 2018-12-05 19:30 | 2018-12-10 20:45 | 91 |  | -0.38d |
| 95 |  | 可行性分析 | 5h | 2018-12-02 08:00 | 2018-12-02 13:00 | 91 |  |  |
| 96 |  | 需求优先级 | 5h | 2018-12-01 08:00 | 2018-12-01 13:00 | 91 |  |  |
| 97 |  | 需求模型 | 5h | 2018-12-02 08:00 | 2018-12-02 13:00 | 91 |  |  |
| 98 |  | 数据字典 | 5h | 2018-12-01 08:00 | 2018-12-01 13:00 | 91 |  |  |
| 99 |  | 质量功能调配 | 5h | 2018-12-02 08:00 | 2018-12-02 13:00 | 91 |  |  |
| 100 |  | 第十二次小组会议 | 1h | 2018-12-08 08:00 | 2018-12-08 09:00 | 91 |  |  |
| 101 | 1.4.1.5 | **需求规范** | 3.69d | 2018-12-12 08:00 | 2018-12-22 17:00 | 92 |  |  |
| 102 |  | 采用模板 | 3h | 2018-12-08 08:00 | 2018-12-08 11:00 | 100 |  |  |
| 103 |  | 记录需求来源 | 5h | 2018-12-08 08:00 | 2018-12-08 13:00 | 100 |  |  |
| 104 |  | 编号标注 | 5h | 2018-12-08 08:00 | 2018-12-08 13:00 | 100 |  |  |
| 105 |  | 记录业务规范 | 4h | 2018-12-08 08:00 | 2018-12-08 12:00 | 100 |  |  |
| 106 |  | 需求跟踪能力矩阵 | 4h | 2018-12-12 19:30 | 2018-12-15 20:45 | 100 |  | 0.75d |
| 107 |  | 《软件需求规格说明书》编写 | 6h | 2018-12-12 19:30 | 2018-12-17 20:45 | 100 |  | 0.5d |
| 108 |  | 《软件需求规格说明书》修改 | 4h | 2018-12-15 16:00 | 2018-12-15 20:00 | 100 |  |  |
| 109 |  | 第十三次小组会议 | 1h | 2018-12-15 08:00 | 2018-12-15 09:00 | 100 |  |  |
| 110 | 1.4.1.7 | **需求验证** | 3.69d | 2018-12-13 08:00 | 2018-12-23 17:00 | 101 |  |  |
| 111 |  | 审查需求文档 | 5h | 2018-12-13 19:30 | 2018-12-17 20:45 |  |  | 1.38d |
| 112 |  | 编写测试用例 | 5h | 2018-12-13 19:30 | 2018-12-17 20:45 |  |  | 1.38d |
| 113 |  | 编写用户手册 | 6h | 2018-12-13 19:30 | 2018-12-18 20:45 |  |  | 1.25d |
| 114 |  | 确定合格标准 | 5h | 2018-12-13 19:30 | 2018-12-17 20:45 |  |  | 1.38d |
| 115 |  | 第十四次小组会议 | 1h | 2018-12-22 08:00 | 2018-12-22 09:00 |  |  |  |
| 116 |  | 阶段评审2 | 2h | 2018-12-23 19:30 | 2018-12-24 20:45 | 110 |  | 2.69d |
| 117 | 1.4.3 | **UML+** | 3.5d | 2018-12-05 08:00 | 2019-01-05 17:00 | 50 |  |  |
| 118 |  | UML对象图ppt素材提供 | 4h | 2018-12-05 19:30 | 2018-12-08 20:45 | 119 |  | 4.69d |
| 119 |  | UML对象图等 翻转 | 4h | 2018-12-05 08:00 | 2018-12-05 12:00 | 50 |  |  |
| 120 |  | UML对象图ppt修订 | 4h | 2018-12-05 19:30 | 2018-12-08 20:45 | 119 |  | 4.69d |
| 121 |  | UML应用与解答ppt素材提供 | 5h | 2018-12-05 19:30 | 2018-12-09 20:45 | 119 |  | 3.44d |
| 122 |  | UML应用与解答 翻转 | 4h | 2018-12-10 19:30 | 2018-12-12 10:00 | 121 |  |  |
| 123 |  | UML应用与解答ppt修订 | 4h | 2018-12-12 19:30 | 2018-12-15 20:45 | 122 |  | 3.81d |
| 124 |  | UML知识测试 | 5h | 2018-12-26 08:00 | 2018-12-26 13:00 | 122 |  |  |
| 125 |  | 第十五次小组会议 | 1h | 2018-12-22 19:30 | 2018-12-22 20:45 | 115 |  | 1.44d |
| 126 | 1.4.4 | **需求管理** | 3.06d | 2018-12-26 08:00 | 2019-01-03 17:00 | 110 |  |  |
| 127 |  | 确定变更控制过程 | 5h | 2018-12-29 10:00 | 2018-12-29 15:00 | 125 |  |  |
| 128 |  | 变更影响分析 | 5h | 2018-12-29 10:00 | 2018-12-29 15:00 | 125 |  |  |
| 129 |  | 跟踪变更 | 5h | 2018-12-29 10:00 | 2018-12-29 15:00 | 125 |  |  |
| 130 |  | 需求文档基准与控制版本的编写 | 5h | 2018-12-29 10:00 | 2018-12-29 15:00 | 125 |  |  |
| 131 |  | 维护变更的历史记录 | 6h | 2018-12-29 10:00 | 2018-12-29 16:00 | 125 |  |  |
| 132 |  | 跟踪需求状态 | 5h | 2018-12-29 10:00 | 2018-12-29 15:00 | 125 |  |  |
| 133 |  | 衡量需求稳定性 | 6h | 2018-12-29 10:00 | 2018-12-29 16:00 | 125 |  |  |
| 134 |  | 使用需求管理工具 | 5h | 2018-12-29 10:00 | 2018-12-29 15:00 | 125 |  |  |
| 135 |  | 系统设计与实现计划 | 6h | 2018-12-29 08:00 | 2018-12-29 14:00 | 125 |  |  |
| 136 |  | 阶段评审3 | 1h | 2019-01-02 08:00 | 2019-01-02 09:00 | 135 |  |  |
| 137 |  | 第二次team building | 4h | 2018-12-29 08:00 | 2018-12-29 12:00 | 25 |  |  |
| 138 |  | 元旦放假 | 2.38d | 2018-12-30 08:00 | 2019-01-01 20:00 |  |  |  |
| 139 | 1.9 | **课堂作业讲评** | 1d | 2018-12-26 08:00 | 2019-01-06 17:00 |  |  |  |
| 140 |  | 计划文档改进 | 5h | 2018-12-29 08:00 | 2018-12-29 13:00 | 125 |  |  |

| ID | WBS | Task | Duration | Start | Finish | Predecessors | Total float |
| --- | --- | --- | --- | --- | --- | --- | --- |
| 141 |  | 需求文档改进 | 5h | 2018-12-29 08:00 | 2018-12-29 13:00 | 125 |  |
| 142 |  | 修改甘特图 | 4h | 2018-12-26 08:00 | 2018-12-26 12:00 | 32 |  |
| 143 |  | 第十六次小组会议 | 2h | 2019-01-05 08:00 | 2019-01-05 10:00 | 125 |  |
| 144 | 1.10 | **项目收尾** | 1.75d | 2019-01-02 08:00 | 2019-01-16 17:00 |  |  |
| 145 |  | 软件概要设计说明 | 6h | 2019-01-05 08:00 | 2019-01-05 14:00 | 125 |  |
| 146 |  | 概要设计说明修订 | 6h | 2019-01-05 19:30 | 2019-01-10 20:45 | 145 | 0.94d |
| 147 |  | 测试计划 | 5h | 2019-01-05 08:00 | 2019-01-05 13:00 | 125 |  |
| 148 |  | 测试计划修订 | 6h | 2019-01-05 19:30 | 2019-01-10 20:45 | 147 | 0.94d |
| 149 |  | 安装部署计划 | 5h | 2019-01-05 08:00 | 2019-01-05 13:00 | 125 |  |
| 150 |  | 部署计划修订 | 6h | 2019-01-05 19:30 | 2019-01-10 20:45 | 149 | 0.94d |
| 151 |  | 培训计划修订 | 5h | 2019-01-05 08:00 | 2019-01-05 13:00 | 65 |  |
| 152 |  | 系统维护计划 | 4h | 2019-01-05 08:00 | 2019-01-05 12:00 | 125 |  |
| 153 |  | 系统维护计划修订 | 4h | 2019-01-05 19:30 | 2019-01-08 20:45 | 152 | 1.19d |
| 154 |  | 第十七次小组会议 | 2h | 2019-01-12 08:00 | 2019-01-12 10:00 | 143 |  |
| 155 |  | 收尾 | 4h | 2019-01-16 08:00 | 2019-01-16 12:00 | 125 |  |
| 156 |  | 评审 项目总结报告 | 4h | 2019-01-12 09:00 | 2019-01-12 13:00 | 143 |  |
| 157 |  | 散伙饭 | 4h | 2019-01-16 08:00 | 2019-01-16 12:00 | 156 |  |
| 158 | 1.11 | **编码** | 2.38d | 2018-09-20 08:00 | 2018-10-05 17:00 |  |  |
| 159 |  | 前段编码 | 1d | 2018-09-20 08:00 | 2018-09-20 16:00 |  |  |
| 160 |  | 后端编码 | 1d? | 2018-09-20 08:00 | 2018-09-20 16:00 |  |  |
| 161 |  | 文档编写 | 1d? | 2018-09-20 08:00 | 2018-09-20 16:00 |  |  |
| 162 | 1.12 | **测试** | 0.38d | 2018-09-20 08:00 | 2018-09-23 17:00 |  |  |
| 163 |  | 单元测试 | 1d | 2018-09-20 08:00 | 2018-09-20 16:00 |  |  |
| 164 |  | 集成测试 | 1d? | 2018-09-20 08:00 | 2018-09-20 16:00 |  |  |
| 165 |  | 系统测试 | 1d? | 2018-09-20 08:00 | 2018-09-20 16:00 |  |  |
| 166 |  | 软件维护 | 1d? | 2018-09-20 08:00 | 2018-09-20 16:00 |  |  |

## Version 2 (saved 2019-01-14, file 甘特图需求.mpp)

Last finish 2019-01-18 → 2019-01-21 (+3d). Complete tasks 67 → 176.

Added:

| ID | Task | Duration | Start | Finish | Predecessors | Constraint | Resources |
| --- | --- | --- | --- | --- | --- | --- | --- |
| 91 | 界面原型修改 | 4.5h | 2018-12-05 19:30 A | 2018-12-09 19:30 A | 90 |  | 陈俊杉 |
| 92 | 移动端界面原型 | 5h | 2018-12-05 19:00 A | 2018-12-09 20:15 A | 90 |  | 陈维 |
| 93 | 项目试图和范围修改 | 2h | 2018-12-05 19:30 A | 2018-12-06 20:45 A | 90 |  | 陈安侍 |
| 94 | 项目视图和范围第二次确认 | 1h | 2018-12-06 08:00 A | 2018-12-06 09:00 A | 90 |  | 陈安侍; 陈俊杉; 陈维; 严翔宇; 杨溢 |
| 96 | 界面原型第二次修改 | 4h | 2018-12-08 19:30 A | 2018-12-11 20:15 A | 95 | start no earlier than 2018-12-08 08:00 | 陈俊杉 |
| 97 | 问卷调查设计 | 2h | 2018-12-08 19:30 A | 2018-12-09 09:00 A | 95 |  | 陈安侍 |
| 98 | 甘特图更新 | 2h | 2018-12-08 19:30 A | 2018-12-09 20:45 A | 95 |  | 杨溢 |
| 99 | SRS框架 | 2h | 2018-12-08 19:30 A | 2018-12-09 20:45 A | 95 |  | 陈安侍 |
| 110 | 游客用户访谈 | 1h | 2018-12-15 08:00 A | 2018-12-15 09:00 A | 95 |  | 陈安侍; 陈俊杉; 陈维; 严翔宇; 杨溢 |
| 111 | 教师用户访谈 | 1h | 2018-12-15 19:00 A | 2018-12-15 20:15 A | 110 |  | 陈安侍 [40%]; 陈俊杉 [15%]; 陈维 [15%]; 严翔宇 [15%]; 杨溢 [15%] |
| 112 | 前端界面原型修改 | 5h | 2018-12-16 19:30 A | 2018-12-17 11:00 A | 111 |  | 陈俊杉 |
| 113 | 移动端界面原型修改 | 4h | 2018-12-16 19:30 A | 2018-12-17 10:00 A | 111 |  | 陈维 |
| 114 | 软工专业用户访谈 | 1h | 2018-12-21 08:00 A | 2018-12-21 09:00 A | 111 |  | 陈安侍 [40%]; 陈俊杉 [15%]; 陈维 [15%]; 严翔宇 [15%]; 杨溢 [15%] |
| 115 | 计算专业用户访谈 | 1h | 2018-12-21 09:00 A | 2018-12-21 10:00 A | 114 |  | 陈安侍 [40%]; 陈俊杉 [15%]; 陈维 [15%]; 严翔宇 [15%]; 杨溢 [15%] |
| 116 | 管理员用户访谈 | 1h | 2018-12-21 10:00 A | 2018-12-21 11:00 A | 115 |  | 陈安侍 [40%]; 陈俊杉 [15%]; 陈维 [15%]; 严翔宇 [15%]; 杨溢 [15%] |
| 117 | 管理员后台界面原型修改 | 3h | 2018-12-21 11:00 A | 2018-12-21 15:00 A | 116 |  | 陈俊杉 |
| 118 | 教师用户第一次确认 | 1h | 2018-12-21 11:00 A | 2018-12-21 12:00 A | 116 |  | 陈安侍 [40%]; 陈俊杉 [15%]; 陈维 [15%]; 严翔宇 [15%]; 杨溢 [15%] |
| 119 | 管理员第一次确认 | 1h | 2018-12-21 15:00 A | 2018-12-21 16:00 A | 117 |  | 陈安侍 [40%]; 陈俊杉 [15%]; 陈维 [15%]; 严翔宇 [15%]; 杨溢 [15%] |
| 120 | 前端界面原型再修改 | 4h | 2018-12-21 13:00 A | 2018-12-21 17:00 A | 118 |  | 陈俊杉 |
| 121 | 移动端界面原型再修改 | 4h | 2018-12-21 13:00 A | 2018-12-21 17:00 A | 118 |  | 陈维 |
| 122 | 管理员后台界面原型修改 | 5h | 2018-12-21 16:00 A | 2018-12-22 12:00 A | 119 |  | 陈俊杉 |
| 123 | 教师用户第二次确认 | 1h | 2018-12-25 08:00 A | 2018-12-25 09:00 A | 120, 121 |  | 陈安侍 [40%]; 陈俊杉 [15%]; 陈维 [15%]; 严翔宇 [15%]; 杨溢 [15%] |
| 124 | 管理员用户第二次确认 | 1h | 2018-12-27 08:00 A | 2018-12-27 09:00 A | 122 |  | 陈安侍 [40%]; 陈俊杉 [15%]; 陈维 [15%]; 严翔宇 [15%]; 杨溢 [15%] |
| 125 | QFD打分表 | 3h | 2018-12-27 09:00 A | 2018-12-27 12:00 A | 123, 124 |  | 严翔宇 |
| 126 | JAD会议 | 1h | 2019-01-03 08:00 A | 2019-01-03 09:00 A | 118 |  | 陈安侍 [40%]; 陈俊杉 [15%]; 陈维 [15%]; 严翔宇 [15%]; 杨溢 [15%] |
| 134 | 对话框图的添加 | 7h | 2018-12-22 08:00 A | 2018-12-22 16:00 A | 111 | start no earlier than 2018-12-22 08:00 | 杨溢 |
| 135 | 用例的添加 | 7h | 2018-12-22 08:00 A | 2018-12-22 16:00 A | 111 | start no earlier than 2018-12-22 08:00 | 陈维 |
| 136 | 数据字典添加 | 5h | 2018-12-22 08:00 A | 2018-12-22 14:00 A | 111 | start no earlier than 2018-12-22 08:00 | 陈安侍 |
| 137 | 需求优先级添加 | 5h | 2018-12-22 08:00 A | 2018-12-22 14:00 A | 111 |  | 严翔宇 |
| 138 | 界面原型添加 | 5h | 2018-12-22 08:00 A | 2018-12-22 14:00 A | 111 |  | 杨溢 |
| 140 | 图编号 | 2h | 2018-12-22 08:00 A | 2018-12-22 10:00 A | 111 |  | 杨溢 |
| 141 | 数据字典标明来源 | 2h | 2018-12-22 08:00 A | 2018-12-22 10:00 A | 111 |  | 陈安侍 |
| 142 | 添加链接 | 2h | 2019-01-05 08:00 A | 2019-01-05 10:00 A | 111 |  | 陈安侍 |
| 154 | 与发布者沟通 | 1h | 2019-01-08 19:30 A | 2019-01-08 20:45 A | 151 |  | 陈安侍 |
| 158 | 界面原型更新(轮播图) | 3h | 2019-01-08 19:30 A | 2019-01-10 20:45 A | 151 | start no earlier than 2019-01-08 08:00 | 陈俊杉 |
| 159 | SRS更新对话框图 | 2h | 2019-01-11 19:30 A | 2019-01-11 21:45 A | 158 |  | 杨溢 |
| 160 | 用例更新 | 2h | 2019-01-11 19:30 A | 2019-01-11 21:45 A | 158 |  | 陈维 |
| 161 | 测试用例更新 | 2h | 2019-01-11 19:30 A | 2019-01-11 21:45 A | 158 |  | 严翔宇 |
| 162 | 用户手册更新 | 3h | 2019-01-11 19:30 A | 2019-01-11 22:45 A | 158 |  | 严翔宇 |
| 163 | CCB章程发布 | 3h | 2019-01-11 19:30 A | 2019-01-11 22:45 A | 158 |  | 陈安侍 |
| 164 | CCB确认 | 1h | 2019-01-11 19:30 A | 2019-01-11 20:30 A | 158 |  | 陈安侍 |
| 165 | 需求变更ppt | 2h | 2019-01-09 19:30 A | 2019-01-10 20:45 A | 154 |  | 陈安侍 |
| 170 | 组内需求变更评审 | 1h | 2019-01-11 19:30 A | 2019-01-11 20:30 A | 165 |  | 陈安侍 [40%]; 陈俊杉 [15%]; 陈维 [15%]; 严翔宇 [15%]; 杨溢 [15%] |
| 171 | 需求可行性分析更新 | 3h | 2019-01-11 20:45 A | 2019-01-11 23:45 A | 170 |  | 严翔宇 |
| 172 | 需求优先级更新 | 4h | 2019-01-12 10:30 A | 2019-01-13 11:30 A | 170 | start no earlier than 2019-01-12 08:00 | 严翔宇 |
| 173 | 变更影响分析更新 | 2h | 2019-01-13 10:30 A | 2019-01-13 19:30 A | 170 | start no earlier than 2019-01-13 08:00 | 杨溢 |
| 181 | 项目总结报告 | 3h | 2019-01-12 11:30 A | 2019-01-13 11:30 A | 179 |  | 陈安侍 [40%]; 陈俊杉 [15%]; 陈维 [15%]; 严翔宇 [15%]; 杨溢 [15%] |
| 182 | SRS主要文档检查 | 3h | 2019-01-13 10:30 A | 2019-01-13 20:30 A | 179 | start no earlier than 2019-01-13 08:00 | 陈维 |
| 183 | 项目章程检查 | 3h | 2019-01-13 10:30 A | 2019-01-13 20:30 A | 179 | start no earlier than 2019-01-13 08:00 | 陈俊杉 |
| 184 | SRS辅助检查 | 3h | 2019-01-13 10:30 A | 2019-01-13 20:30 A | 179 | start no earlier than 2019-01-13 08:00 | 杨溢 |
| 185 | 可行性分析报告检查 | 3h | 2019-01-13 10:30 A | 2019-01-13 20:30 A | 179 | start no earlier than 2019-01-13 08:00 | 严翔宇 |
| 186 | 需求变更文档检查 | 3h | 2019-01-13 10:30 A | 2019-01-13 20:30 A | 179 | start no earlier than 2019-01-13 08:00 | 严翔宇 |
| 187 | 最终评审ppt | 3h | 2019-01-14 10:30 A | 2019-01-14 20:30 A | 179 | start no earlier than 2019-01-14 08:00 | 陈安侍 [40%]; 陈俊杉 [15%]; 陈维 [15%]; 严翔宇 [15%]; 杨溢 [15%] |
| 188 | 组内评审最终 | 2h | 2019-01-14 10:30 A | 2019-01-14 19:30 A | 179 | start no earlier than 2019-01-14 08:00 | 陈安侍 [40%]; 陈俊杉 [15%]; 陈维 [15%]; 严翔宇 [15%]; 杨溢 [15%] |

Removed: 117 UML+; 118 UML对象图ppt素材提供; 119 UML对象图等 翻转; 120 UML对象图ppt修订; 121 UML应用与解答ppt素材提供; 122 UML应用与解答 翻转; 123 UML应用与解答ppt修订; 124 UML知识测试; 135 系统设计与实现计划; 138 元旦放假; 145 软件概要设计说明; 146 概要设计说明修订; 147 测试计划; 148 测试计划修订; 149 安装部署计划; 150 部署计划修订; 151 培训计划修订; 152 系统维护计划; 153 系统维护计划修订; 158 编码; 159 前段编码; 160 后端编码; 161 文档编写; 162 测试; 163 单元测试; 164 集成测试; 165 系统测试; 166 软件维护

Changed:

| ID | Task | Start | Finish | Duration | Complete | Total float | Predecessors | Other |
| --- | --- | --- | --- | --- | --- | --- | --- | --- |
| 1 | **软件工程系列课程教学辅助网站计划** | 2018-09-20 08:00 A → 2018-09-27 08:00 A (+7d) | 2019-01-18 20:00 → 2019-01-21 21:01 (+3d) | 13.81d → 33.75d | 41% → 99% | none → 0d |  |  |
| 2 | **项目启动** | 2018-09-26 08:00 → 2018-09-27 08:00 A (+1d) | 2018-09-30 20:00 → 2018-09-29 20:45 A (-1d) | 2d → 0.38d |  |  |  |  |
| 6 | **项目计划** |  | 2018-10-15 20:45 → 2018-10-08 20:45 A (-7d) | 2.94d → 0.62d | 96% → 100% |  |  |  |
| 11 | 创建wbs | 2018-09-30 19:30 A | 2018-10-08 20:45 A |  | 0% → 100% |  |  | constraint none → finish no earlier than 2018-09-30 20:00 |
| 12 | 人力资源与预算 |  | 2018-09-27 14:00 A → 2018-09-27 12:00 A | 4h → 3h |  |  |  |  |
| 13 | 创建OBS | 2018-09-30 19:30 A | 2018-09-30 20:45 A |  | 0% → 100% |  |  |  |
| 20 | 国庆放假 |  | 2018-10-07 20:00 A → 2018-10-06 17:00 A (-1d) |  |  |  |  |  |
| 21 | **UML知识搭建** |  | 2018-11-28 12:00 → 2018-12-01 19:31 A (+3d) | 6.38d → 7.31d | 94% → 100% | 6.06d → none |  |  |
| 26 | 《需求工程计划-初步》提交 |  | 2018-10-10 12:00 A → 2018-10-10 11:00 A | 4h → 3h |  |  |  |  |
| 30 | UML概述 翻转 |  | 2018-10-10 14:00 A → 2018-10-10 12:00 A | 5h → 4h |  |  |  |  |
| 34 | 《QA计划》提交 |  | 2018-10-17 14:00 A → 2018-10-17 11:00 A | 5h → 3h |  |  |  |  |
| 35 | UML工具process on 翻转ppt |  | 2018-10-17 13:00 A → 2018-10-17 11:00 A | 5h → 3h |  |  |  |  |
| 39 | 需求工程项目计划书修改 |  | 2018-10-27 12:00 A → 2018-10-27 11:00 A | 4h → 3h |  |  |  |  |
| 48 | 需求计划修改 |  | 2018-11-04 14:00 A → 2018-11-04 12:00 A | 5h → 4h |  |  |  |  |
| 50 | UML界面原型 翻转 |  | 2018-11-03 12:00 A → 2018-11-03 11:00 A | 4h → 3h |  |  |  |  |
| 51 | 界面原型ppt修订 |  | 2018-11-10 12:00 A → 2018-11-10 11:00 A | 4h → 3h |  |  |  |  |
| 53 | 里程碑ppt编写 |  | 2018-11-03 14:00 A → 2018-11-03 12:00 A | 4h → 3h |  |  | 45 → 45, 48 |  |
| 61 | 风险管理修改 |  | 2018-11-11 14:00 A → 2018-11-11 10:00 A | 5h → 2h |  |  |  |  |
| 64 | 需求计划里程碑ppt修改 |  | 2018-11-18 12:00 A → 2018-11-18 11:00 A | 4h → 3h |  |  |  |  |
| 70 | 新模板填写 |  | 2018-11-24 14:00 A → 2018-11-24 11:00 A | 5h → 3h |  |  |  |  |
| 72 | wbs结构大修订 |  | 2018-11-26 20:45 → 2018-11-25 11:00 A (-1d) | 5h → 3h | 60% → 100% | 6.19d → none |  |  |
| 73 | 里程碑ppt修订 |  | 2018-11-25 11:00 → 2018-11-25 10:00 A | 3h → 2h | 96% → 100% | 6.44d → none |  |  |
| 74 | 计划文档修改 |  | 2018-11-26 20:45 → 2018-11-25 12:00 A (-1d) | 5h → 4h | 60% → 100% | 6.19d → none |  |  |
| 76 | 组内模拟评审 | 2018-11-26 08:00 A | 2018-11-26 10:00 A |  | 0% → 100% |  | 75 → 75, 73 |  |
| 77 | 阶段评审1 | 2018-11-28 08:00 → 2018-11-28 19:30 A | 2018-11-28 10:00 → 2018-11-28 20:45 A | 2h → 1h | 0% → 100% |  | 54 → 71, 74, 73, 72, 76 | constraint none → start no earlier than 2018-11-28 08:00 |
| 78 | 检查项目 | 2018-11-28 08:00 A | 2018-11-28 12:00 A |  | 0% → 100% |  |  |  |
| 79 | 第十次小组会议 | 2018-11-24 09:00 A → 2018-11-30 19:30 A (+6d) | 2018-11-24 10:00 A → 2018-11-30 20:45 A (+6d) |  |  |  | 75 → 77 | constraint none → start no earlier than 2018-11-30 08:00 |
| 80 | 第二次team building | 2018-12-29 08:00 → 2018-12-01 08:00 A (-28d) | 2018-12-29 12:00 → 2018-12-01 19:31 A (-28d) | 4h → 5h | 0% → 100% |  | 25 → 79 |  |
| 81 | **项目执行** | 2018-11-28 08:00 → 2018-12-01 19:30 A (+3d) | 2019-01-18 20:00 → 2019-01-13 19:30 A (-5d) | 6.06d → 19.56d | 0% → 100% | 0d → none |  |  |
| 82 | **需求开发** | 2018-11-28 08:00 → 2018-12-01 19:30 A (+3d) | 2019-01-18 20:00 → 2019-01-09 20:45 A (-9d) | 7.5d → 18.31d | 0% → 100% |  |  |  |
| 83 | **需求获取** | 2018-11-28 08:00 → 2018-12-01 19:30 A (+3d) | 2018-12-08 17:00 → 2018-12-09 20:15 A (+1d) | 3.69d → 1.06d | 0% → 100% |  |  |  |
| 84 | 项目视图和范围初稿 | 2018-11-29 08:00 → 2018-12-01 19:30 A (+2d) | 2018-11-29 13:00 → 2018-12-04 20:45 A (+5d) | 5h → 4h | 0% → 100% |  |  | was named 项目视图和范围编写 |
| 85 | 确定开发过程 | 2018-11-29 08:00 → 2018-12-01 19:30 A (+2d) | 2018-11-29 12:00 → 2018-12-04 20:45 A (+5d) |  | 0% → 100% |  |  |  |
| 86 | 用户分类 | 2018-11-29 08:00 → 2018-12-05 19:30 A (+6d) | 2018-11-29 11:00 → 2018-12-08 20:15 A (+9d) | 3h → 4h | 0% → 100% |  | 79 → 84 |  |
| 87 | 用户工作流程分析 | 2018-11-29 08:00 → 2018-12-05 19:30 A (+6d) | 2018-11-29 11:00 → 2018-12-07 20:45 A (+8d) |  | 0% → 100% |  | 79 → 84 |  |
| 88 | 检查问题报告 | 2018-11-29 08:00 → 2018-12-01 19:30 A (+2d) | 2018-11-29 12:00 → 2018-12-04 20:45 A (+5d) |  | 0% → 100% |  |  |  |
| 89 | 界面原型草稿 | 2018-11-30 08:00 → 2018-12-01 19:30 A (+1d) | 2018-11-30 13:00 → 2018-12-04 20:45 A (+4d) | 5h → 4h | 0% → 100% |  |  |  |
| 90 | 项目试图和范围编写确认 | 2018-11-29 08:00 → 2018-12-04 19:30 A (+5d) | 2018-11-29 10:00 → 2018-12-04 20:45 A (+5d) | 2h → 1h | 0% → 100% |  |  | was named 从需求获取者获取需求; constraint none → start no earlier than 2018-12-04 08:00 |
| 95 | 第十一次小组会议 | 2018-12-01 08:00 → 2018-12-07 08:00 A (+6d) | 2018-12-01 09:00 → 2018-12-07 20:45 A (+6d) |  | 0% → 100% |  |  | constraint none → start no earlier than 2018-12-07 08:00 |
| 100 | **需求分析** | 2018-12-05 08:00 → 2018-12-06 19:30 A (+1d) | 2018-12-15 17:00 → 2018-12-14 20:45 A (-1d) | 3.69d → 1.06d | 0% → 100% |  |  |  |
| 101 | 关联图 | 2018-12-01 08:00 → 2018-12-06 19:30 A (+5d) | 2018-12-01 13:00 → 2018-12-09 20:45 A (+8d) | 5h → 4h | 0% → 100% |  | 95 → 84 | constraint none → start no earlier than 2018-12-06 08:00; resources 杨溢 → 陈维 |
| 102 | 开发原型 | 2018-12-05 19:30 → 2018-12-08 19:30 A (+3d) | 2018-12-10 20:45 → 2018-12-14 20:15 A (+4d) | 6h → 7h | 0% → 100% | -0.38d → none |  |  |
| 103 | 可行性分析 | 2018-12-02 08:00 → 2018-12-08 19:30 A (+6d) | 2018-12-02 13:00 → 2018-12-12 20:45 A (+10d) |  | 0% → 100% |  |  |  |
| 104 | 需求优先级 | 2018-12-01 08:00 → 2018-12-08 19:30 A (+7d) | 2018-12-01 13:00 → 2018-12-12 20:45 A (+11d) |  | 0% → 100% |  |  |  |
| 105 | 需求模型 | 2018-12-02 08:00 → 2018-12-08 19:30 A (+6d) | 2018-12-02 13:00 → 2018-12-12 20:45 A (+10d) |  | 0% → 100% |  |  |  |
| 106 | 数据字典 | 2018-12-01 08:00 → 2018-12-08 19:30 A (+7d) | 2018-12-01 13:00 → 2018-12-12 20:15 A (+11d) |  | 0% → 100% |  |  |  |
| 107 | 质量功能调配 | 2018-12-02 08:00 → 2018-12-08 19:30 A (+6d) | 2018-12-02 13:00 → 2018-12-12 20:45 A (+10d) |  | 0% → 100% |  |  |  |
| 108 | 确定质量属性 | 2018-11-29 08:00 → 2018-12-11 19:30 A (+12d) | 2018-11-29 12:00 → 2018-12-14 20:45 A (+15d) |  | 0% → 100% |  | 79 → 95 | constraint none → start no earlier than 2018-12-11 08:00 |
| 109 | 第十二次小组会议 | 2018-12-08 08:00 → 2018-12-14 19:00 A (+6d) | 2018-12-08 09:00 → 2018-12-14 20:15 A (+6d) |  | 0% → 100% |  |  | constraint none → start no earlier than 2018-12-14 08:00 |
| 127 | **需求规范** | 2018-12-12 08:00 → 2018-12-15 19:00 A (+3d) | 2018-12-22 17:00 → 2019-01-05 10:00 A (+14d) | 3.69d → 16d | 0% → 100% |  |  |  |
| 128 | 采用模板 | 2018-12-08 08:00 → 2018-12-15 19:00 A (+7d) | 2018-12-08 11:00 → 2018-12-16 21:45 A (+8d) |  | 0% → 100% |  |  |  |
| 129 | 记录需求来源 | 2018-12-08 08:00 → 2018-12-15 19:00 A (+7d) | 2018-12-08 13:00 → 2018-12-17 10:00 A (+9d) |  | 0% → 100% |  |  |  |
| 130 | 编号标注 | 2018-12-08 08:00 → 2018-12-15 19:00 A (+7d) | 2018-12-08 13:00 → 2018-12-17 10:00 A (+9d) |  | 0% → 100% |  |  |  |
| 131 | 记录业务规范 | 2018-12-08 08:00 → 2018-12-15 19:00 A (+7d) | 2018-12-08 12:00 → 2018-12-17 09:00 A (+9d) |  | 0% → 100% |  |  | resources 严翔宇 → 杨溢 |
| 132 | 需求跟踪能力矩阵 | 2018-12-12 19:30 → 2018-12-15 19:00 A (+3d) | 2018-12-15 20:45 → 2018-12-17 09:00 A (+2d) |  | 0% → 100% | 0.75d → none |  | resources 杨溢 → 严翔宇 |
| 133 | **《软件需求规格说明书》编写** | 2018-12-12 19:30 → 2018-12-22 08:00 A (+10d) | 2018-12-17 20:45 → 2019-01-05 10:00 A (+19d) | 6h → 10.62d | 0% → 100% | 0.5d → none |  | resources 严翔宇 → none |
| 139 | 《软件需求规格说明书》修改 | 2018-12-15 16:00 → 2018-12-29 08:00 A (+14d) | 2018-12-15 20:00 → 2018-12-29 12:00 A (+14d) |  | 0% → 100% |  | 109 → 111 | constraint none → start no earlier than 2018-12-29 08:00 |
| 143 | 第十三次小组会议 | 2018-12-15 08:00 → 2018-12-21 08:00 A (+6d) | 2018-12-15 09:00 → 2018-12-21 09:00 A (+6d) |  | 0% → 100% |  |  | constraint none → start no earlier than 2018-12-21 08:00 |
| 144 | **需求验证** | 2018-12-13 08:00 → 2018-12-22 19:30 A (+9d) | 2018-12-23 17:00 → 2018-12-27 20:45 A (+4d) | 3.69d → 5d | 0% → 100% |  |  |  |
| 145 | 审查需求文档 | 2018-12-13 19:30 → 2018-12-22 19:30 A (+9d) | 2018-12-17 20:45 → 2018-12-26 20:45 A (+9d) |  | 0% → 100% | 1.38d → none | none → 143 |  |
| 146 | 编写测试用例 | 2018-12-13 19:30 → 2018-12-22 19:30 A (+9d) | 2018-12-17 20:45 → 2018-12-26 20:45 A (+9d) |  | 0% → 100% | 1.38d → none | none → 143 |  |
| 147 | 编写用户手册 | 2018-12-13 19:30 → 2018-12-22 19:30 A (+9d) | 2018-12-18 20:45 → 2018-12-27 20:45 A (+9d) |  | 0% → 100% | 1.25d → none | none → 143 |  |
| 148 | 确定合格标准 | 2018-12-13 19:30 → 2018-12-22 19:30 A (+9d) | 2018-12-17 20:45 → 2018-12-26 20:45 A (+9d) |  | 0% → 100% | 1.38d → none | none → 143 |  |
| 149 | 第十四次小组会议 | 2018-12-22 08:00 → 2018-12-29 08:00 A (+7d) | 2018-12-22 09:00 → 2018-12-29 09:00 A (+7d) |  | 0% → 100% |  | none → 143 |  |
| 150 | 第十五次小组会议 | 2018-12-22 19:30 → 2019-01-07 19:30 A (+16d) | 2018-12-22 20:45 → 2019-01-07 20:45 A (+16d) |  | 0% → 100% | 1.44d → none |  | constraint none → start no earlier than 2019-01-04 08:00 |
| 151 | 阶段评审2SRS | 2018-12-23 19:30 → 2019-01-09 08:00 A (+17d) | 2018-12-24 20:45 → 2019-01-09 20:45 A (+16d) | 2h → 1h | 0% → 100% | 2.69d → none | 144 → 145, 146, 147, 148, 126, 125 | was named 阶段评审2; constraint none → start no earlier than 2019-01-03 08:00 |
| 152 | **需求管理** | 2018-12-26 08:00 → 2019-01-08 19:30 A (+13d) | 2019-01-03 17:00 → 2019-01-13 19:30 A (+10d) | 3.06d → 1.5d | 0% → 100% |  | 144 → 151 |  |
| 153 | 确定变更控制过程 | 2018-12-29 10:00 → 2019-01-08 19:30 A (+10d) | 2018-12-29 15:00 → 2019-01-11 21:45 A (+13d) |  | 0% → 100% |  | 150 → 151 |  |
| 155 | 变更影响分析 | 2018-12-29 10:00 → 2019-01-08 19:30 A (+10d) | 2018-12-29 15:00 → 2019-01-11 21:45 A (+13d) |  | 0% → 100% |  | 150 → 151 |  |
| 156 | 跟踪变更 | 2018-12-29 10:00 → 2019-01-08 19:30 A (+10d) | 2018-12-29 15:00 → 2019-01-11 21:45 A (+13d) |  | 0% → 100% |  | 150 → 151 |  |

| ID | Task | Start | Finish | Duration | Complete | Total float | Predecessors | Other |
| --- | --- | --- | --- | --- | --- | --- | --- | --- |
| 157 | 需求文档基准与控制版本的编写 | 2018-12-29 10:00 → 2019-01-08 19:30 A (+10d) | 2018-12-29 15:00 → 2019-01-11 21:45 A (+13d) |  | 0% → 100% |  | 150 → 151 |  |
| 166 | 维护变更的历史记录 | 2018-12-29 10:00 → 2019-01-08 19:30 A (+10d) | 2018-12-29 16:00 → 2019-01-11 22:45 A (+13d) |  | 0% → 100% |  | 150 → 151 |  |
| 167 | 跟踪需求状态 | 2018-12-29 10:00 → 2019-01-08 19:30 A (+10d) | 2018-12-29 15:00 → 2019-01-11 21:45 A (+13d) |  | 0% → 100% |  | 150 → 151 |  |
| 168 | 衡量需求稳定性 | 2018-12-29 10:00 → 2019-01-08 19:30 A (+10d) | 2018-12-29 16:00 → 2019-01-11 22:45 A (+13d) |  | 0% → 100% |  | 150 → 151 |  |
| 169 | 使用需求管理工具 | 2018-12-29 10:00 → 2019-01-08 19:30 A (+10d) | 2018-12-29 15:00 → 2019-01-11 21:45 A (+13d) |  | 0% → 100% |  | 150 → 151 | constraint none → finish no earlier than 2019-01-10 20:00; resources 陈维 → 陈安侍 |
| 174 | **课堂作业改进** | 2018-12-26 08:00 → 2019-01-08 19:30 A (+13d) | 2019-01-06 17:00 → 2019-01-12 11:30 A (+6d) |  | 0% → 100% |  |  | was named 课堂作业讲评 |
| 175 | 计划文档改进 | 2018-12-29 08:00 → 2019-01-08 19:30 A (+10d) | 2018-12-29 13:00 → 2019-01-11 21:45 A (+13d) |  | 0% → 100% |  | 150 → 151 | resources 杨溢 → 陈俊杉 |
| 176 | 需求文档改进 | 2018-12-29 08:00 → 2019-01-08 19:30 A (+10d) | 2018-12-29 13:00 → 2019-01-11 21:45 A (+13d) |  | 0% → 100% |  | 150 → 151 |  |
| 177 | 修改甘特图 | 2018-12-26 08:00 → 2019-01-08 19:30 A (+13d) | 2018-12-26 12:00 → 2019-01-10 20:45 A (+15d) | 4h → 3h | 0% → 100% |  | 32 → 151 | constraint none → finish no earlier than 2019-01-10 20:00 |
| 178 | 阶段评审3 需求变更评审 | 2019-01-02 08:00 → 2019-01-11 21:45 A (+9d) | 2019-01-02 09:00 → 2019-01-11 22:45 A (+9d) |  | 0% → 100% |  | 系统设计与实现计划 → 175, 176, 177, 171, 172, 173 | was named 阶段评审3; constraint none → start no earlier than 2019-01-11 08:00 |
| 179 | 第十六次小组会议 | 2019-01-05 08:00 → 2019-01-12 10:30 A (+7d) | 2019-01-05 10:00 → 2019-01-12 11:30 A (+7d) | 2h → 1h | 0% → 100% |  | 150 → 178 | constraint none → start no earlier than 2019-01-12 08:00 |
| 180 | **项目收尾** | 2019-01-02 08:00 → 2019-01-12 11:30 A (+10d) | 2019-01-16 17:00 → 2019-01-21 21:01 (+5d) | 1.75d → 6.88d | 0% → 84% | none → 0d |  |  |
| 189 | 第十七次小组会议 | 2019-01-12 08:00 → 2019-01-15 10:30 A (+3d) | 2019-01-12 10:00 → 2019-01-15 11:30 A (+3d) | 2h → 1h | 0% → 100% |  |  | constraint none → start no earlier than 2019-01-15 08:00 |
| 190 | 收尾 | 2019-01-16 08:00 → 2019-01-15 11:30 A (-1d) | 2019-01-16 12:00 → 2019-01-15 20:30 A (-1d) | 4h → 2h | 0% → 100% |  | 150 → 189 |  |
| 191 | 最终评审 | 2019-01-12 09:00 → 2019-01-16 08:00 (+4d) | 2019-01-12 13:00 → 2019-01-16 09:00 (+4d) | 4h → 1h |  | none → 4.88d | 179 → 190 | was named 评审 项目总结报告; constraint none → start no earlier than 2019-01-16 08:00 |
| 192 | 散伙饭 | 2019-01-16 08:00 → 2019-01-21 17:00 (+5d) | 2019-01-16 12:00 → 2019-01-21 21:01 (+5d) |  |  | none → 0d |  | constraint none → start no earlier than 2019-01-21 08:00 |

## Version 3 (saved 2019-01-14, file 甘特图总体.mpp)

Last finish stays 2019-01-21. Complete tasks 176 → 192.

Added:

| ID | Task | Duration | Start | Finish | Predecessors | Constraint | Resources |
| --- | --- | --- | --- | --- | --- | --- | --- |
| 150 | **UML+** | 17.88d | 2018-12-05 08:00 A | 2019-01-09 20:45 A | 50 |  |  |
| 151 | UML对象图ppt素材提供 | 4h | 2018-12-05 19:30 A | 2018-12-08 20:45 A | 152 |  | 陈俊杉 |
| 152 | UML对象图等 翻转 | 4h | 2018-12-05 08:00 A | 2018-12-05 12:00 A | 50 |  | 陈安侍 |
| 153 | UML对象图ppt修订 | 4h | 2018-12-05 19:30 A | 2018-12-08 20:45 A | 152 |  | 陈俊杉 |
| 154 | UML应用与解答ppt素材提供 | 5h | 2018-12-05 19:30 A | 2018-12-09 20:45 A | 152 |  | 严翔宇 |
| 155 | UML应用与解答 翻转 | 4h | 2018-12-10 19:30 A | 2018-12-12 10:00 A | 154 |  | 陈俊杉 |
| 156 | UML应用与解答ppt修订 | 4h | 2018-12-12 19:30 A | 2018-12-15 20:45 A | 155 |  | 陈俊杉 |
| 157 | UML知识测试 | 3h | 2018-12-12 19:30 A | 2018-12-14 20:45 A | 155 |  | 陈安侍; 陈俊杉; 陈维; 严翔宇; 杨溢 |
| 182 | **设计计划** | 3.31d | 2018-12-30 08:00 A | 2019-01-10 20:00 |  |  |  |
| 183 | 系统设计与实现计划编写 | 6h | 2018-12-30 08:00 A | 2018-12-30 17:00 A | 159 |  | 陈安侍 |
| 184 | 软件概要设计说明 | 7.5h | 2019-01-01 08:00 A | 2019-01-03 20:00 A | 159 | finish no earlier than 2019-01-03 20:00 | 严翔宇 |
| 185 | 概要设计说明修订 | 6h | 2019-01-04 19:30 A | 2019-01-09 20:45 A | 184 | start no earlier than 2019-01-04 08:00 | 陈安侍 |
| 186 | **测试计划** | 1.25d | 2019-01-04 19:30 A | 2019-01-11 22:45 A |  |  |  |
| 187 | 测试计划编写 | 4h | 2019-01-04 19:30 A | 2019-01-07 20:45 A | 159 | start no earlier than 2019-01-04 08:00 | 陈俊杉 |
| 188 | 测试计划修订 | 6h | 2019-01-08 19:30 A | 2019-01-11 22:45 A | 187 |  | 陈俊杉 |
| 189 | **部署计划** | 4.25d | 2019-01-04 08:00 | 2019-01-15 20:00 |  |  |  |
| 190 | 安装部署计划 | 5h | 2019-01-04 19:30 A | 2019-01-08 20:45 A | 159 | start no earlier than 2019-01-04 08:00 | 陈维 |
| 191 | 部署计划修订 | 6h | 2019-01-09 19:30 A | 2019-01-11 23:45 A | 190 |  | 陈维 |
| 192 | **维护计划** | 3.12d | 2019-01-04 08:00 | 2019-01-12 20:00 |  |  |  |
| 193 | 系统维护计划 | 4h | 2019-01-04 19:30 A | 2019-01-07 20:45 A | 159 |  | 杨溢 |
| 194 | 系统维护计划修订 | 3h | 2019-01-08 19:30 A | 2019-01-10 20:45 A | 193 |  | 杨溢 |
| 214 | **编码** | 3.81d | 2018-09-27 08:00 | 2018-10-22 20:45 |  |  |  |
| 215 | 前段编码 | 1d | 2018-09-27 08:00 | 2018-09-27 16:00 |  |  |  |
| 216 | 后端编码 | 1d? | 2018-09-27 08:00 | 2018-09-27 16:00 |  |  |  |
| 217 | 文档编写 | 1d? | 2018-09-27 08:00 | 2018-09-27 16:00 |  |  |  |
| 218 | **测试** | 2.81d | 2018-09-27 08:00 | 2018-10-14 20:45 |  |  |  |
| 219 | 单元测试 | 1d | 2018-09-27 08:00 | 2018-09-27 16:00 |  |  |  |
| 220 | 集成测试 | 1d? | 2018-09-27 08:00 | 2018-09-27 16:00 |  |  |  |
| 221 | 系统测试 | 1d? | 2018-09-27 08:00 | 2018-09-27 16:00 |  |  |  |
| 222 | 软件维护 | 1d? | 2018-09-27 08:00 | 2018-09-27 16:00 |  |  |  |

Changed:

| ID | Task | Start | Finish | Duration | Complete | Predecessors | Other |
| --- | --- | --- | --- | --- | --- | --- | --- |
| 1 | **软件工程系列课程教学辅助网站计划** |  |  |  | 99% → 90% |  |  |
| 76 | 组内模拟评审 |  |  |  |  | 75, 73 → 75 |  |
| 77 | 阶段评审1 | 2018-11-28 19:30 A → 2018-11-28 08:00 A | 2018-11-28 20:45 A → 2018-11-28 09:00 A |  |  |  | constraint start no earlier than 2018-11-28 08:00 → none |
| 81 | **项目执行** | 2018-12-01 19:30 A → 2018-11-28 08:00 (-3d) | 2019-01-13 19:30 A → 2019-01-18 20:00 (+5d) | 19.56d → 24.37d |  |  |  |
| 82 | **需求开发** | 2018-12-01 19:30 A → 2018-11-28 08:00 (-3d) | 2019-01-09 20:45 A → 2019-01-18 20:00 (+9d) | 18.31d → 26.19d |  |  |  |
| 83 | **需求获取** |  | 2018-12-09 20:15 A → 2018-12-09 19:30 A | 1.06d → 1d |  |  |  |
| 86 | 用户分类 |  | 2018-12-08 20:15 A → 2018-12-07 20:45 A (-1d) | 4h → 3h |  |  |  |
| 92 | 移动端界面原型 |  | 2018-12-09 20:15 A → 2018-12-08 10:00 A (-1d) |  |  |  |  |
| 96 | 界面原型第二次修改 |  | 2018-12-11 20:15 A → 2018-12-09 20:45 A (-2d) | 4h → 2h |  |  |  |
| 100 | **需求分析** | 2018-12-06 19:30 A → 2018-11-30 08:00 (-6d) | 2018-12-14 20:45 A → 2018-12-15 11:00 (+1d) | 1.06d → 3.69d |  |  |  |
| 102 | 开发原型 |  | 2018-12-14 20:15 A → 2018-12-13 20:45 A (-1d) | 7h → 6h |  |  |  |
| 106 | 数据字典 |  | 2018-12-12 20:15 A → 2018-12-11 20:45 A (-1d) | 5h → 4h |  |  |  |
| 112 | 前端界面原型修改 |  | 2018-12-17 11:00 A → 2018-12-17 10:00 A | 5h → 4h |  |  |  |
| 120 | 前端界面原型修改 |  |  |  |  |  | was named 前端界面原型再修改 |
| 122 | 管理员后台界面原型修改 |  | 2018-12-22 12:00 A → 2018-12-22 11:00 A | 5h → 4h |  |  |  |
| 144 | **需求验证** |  | 2018-12-27 20:45 A → 2018-12-29 09:00 A (+2d) | 5d → 6.12d |  |  |  |
| 159 | 阶段评审2SRS |  |  |  |  | 145, 146, 147, 148, 126, 125 → 145, 146, 147, 148, 156, 157, 149, 125 |  |
| 160 | **需求管理** |  | 2019-01-13 19:30 A → 2019-01-13 11:00 A | 1.5d → 1.31d |  | 159 → 144 |  |
| 166 | 界面原型更新(轮播图) |  | 2019-01-10 20:45 A → 2019-01-09 20:45 A (-1d) | 3h → 2h |  |  |  |
| 167 | SRS更新 | 2019-01-11 19:30 A → 2019-01-10 19:30 A (-1d) | 2019-01-11 21:45 A → 2019-01-11 20:30 A |  |  |  | was named SRS更新对话框图 |
| 168 | 用例更新 | 2019-01-11 19:30 A → 2019-01-10 19:30 A (-1d) | 2019-01-11 21:45 A → 2019-01-11 20:30 A |  |  |  |  |
| 169 | 测试用例更新 | 2019-01-11 19:30 A → 2019-01-10 19:30 A (-1d) | 2019-01-11 21:45 A → 2019-01-11 20:30 A |  |  |  |  |
| 170 | 用户手册更新 | 2019-01-11 19:30 A → 2019-01-10 19:30 A (-1d) | 2019-01-11 22:45 A → 2019-01-11 20:30 A | 3h → 2h |  |  |  |
| 171 | CCB章程发布 | 2019-01-11 19:30 A → 2019-01-10 19:30 A (-1d) | 2019-01-11 22:45 A → 2019-01-11 20:30 A | 3h → 2h |  |  |  |
| 172 | CCB确认 | 2019-01-11 19:30 A → 2019-01-10 19:30 A (-1d) | 2019-01-11 20:30 A → 2019-01-10 20:45 A (-1d) |  |  |  |  |
| 179 | 需求可行性分析更新 | 2019-01-11 20:45 A → 2019-01-13 08:00 A (+2d) | 2019-01-11 23:45 A → 2019-01-13 11:00 A (+2d) |  |  |  |  |
| 180 | 需求优先级更新 | 2019-01-12 10:30 A → 2019-01-11 20:45 A (-1d) | 2019-01-13 11:30 A → 2019-01-11 23:45 A (-2d) | 4h → 3h |  |  | constraint start no earlier than 2019-01-12 08:00 → none |
| 181 | 变更影响分析更新 | 2019-01-13 10:30 A → 2019-01-13 08:00 A | 2019-01-13 19:30 A → 2019-01-13 10:00 A |  |  |  | constraint start no earlier than 2019-01-13 08:00 → none |
| 195 | **课堂作业检查** |  |  |  |  |  | was named 课堂作业改进 |
| 196 | 计划文档改进 |  |  |  |  | 159 → 178 | resources 陈俊杉 → 杨溢 |
| 197 | 需求文档改进 |  |  |  |  | 159 → 178 |  |
| 198 | 修改甘特图 |  |  |  |  | 159 → 178 |  |
